# Проект Kingdom

Schedule from MS Project, 2018-04-05 to 2018-06-01, costs in ₽.

## Calendars

- Стандартный: Mon-Fri 09:00-13:00, 14:00-18:00; Sat-Sun off.

## Resources

| Resource | Rate |
| --- | --- |
| Программист | 100 |
| Аналитик | 90 |
| Тестировщик | 80 |

## Schedule

| ID | WBS | Task | Duration | Start | Finish | Predecessors | Total slack | Free slack | Constraint | Resources | Work | Cost |
| --- | --- | --- | --- | --- | --- | --- | --- | --- | --- | --- | --- | --- |
| 1 | 1 | **Модификация комплекса ПП "Такси"** | 41.52d | 2018-04-05 09:00 | 2018-06-01 14:10 |  | 0d |  |  |  | 193.88h | 18,693.75 |
| 2 | 1.1 | **Анализ требований, предъявляемых к системе** | 3.6d | 2018-04-05 09:00 | 2018-04-10 14:50 |  | 0d |  |  |  | 14.42h | 1,297.5 |
| 3 | 1.1.1 | Формирование целей и задач | 0.52d | 2018-04-05 09:00 | 2018-04-05 14:10 |  | 0d |  | start no earlier than 2018-04-05 09:00 | Аналитик [50%] | 2.08h | 187.5 |
| 4 | 1.1.2 | Создание технического задания | 2d | 2018-04-05 14:10 | 2018-04-09 14:10 | 3 | 0d |  |  | Аналитик [50%] | 8h | 720 |
| 5 | 1.1.3 | Составление сроков | 1.08d | 2018-04-09 14:10 | 2018-04-10 14:50 | 4 | 0d |  |  | Аналитик [50%] | 4.33h | 390 |
| 6 | 1.2 | **Проектирование** | 5.74d | 2018-04-10 14:50 | 2018-04-18 11:45 |  | 0d |  |  |  | 22.96h | 2,066.25 |
| 7 | 1.2.1 | Логическая схема БД | 6.33h | 2018-04-10 14:50 | 2018-04-11 12:10 | 2 | 0d |  |  | Аналитик [50%] | 3.17h | 285 |
| 8 | 1.2.2 | Диаграмма вариантов использования | 4.33h | 2018-04-11 12:10 | 2018-04-11 17:30 | 7 | 30.58d | 0d |  | Аналитик [50%] | 2.17h | 195 |
| 9 | 1.2.3 | Основной успешный сценарий | 1.08d | 2018-04-11 17:30 | 2018-04-13 09:10 | 8 | 30.58d | 0d |  | Аналитик [50%] | 4.33h | 390 |
| 10 | 1.2.4 | Карта сайта | 0.4d | 2018-04-13 09:10 | 2018-04-13 12:20 | 9 | 30.58d | 0d |  | Аналитик [50%] | 1.58h | 142.5 |
| 11 | 1.2.5 | Выбор платформы разработки | 4.33h | 2018-04-17 14:25 | 2018-04-18 09:45 | 10 | 32.43d |  |  | Аналитик [50%] | 2.17h | 195 |
| 12 | 1.2.6 | Создание макета интерфейса | 2d | 2018-04-13 12:20 | 2018-04-17 12:20 |  | 32.97d | 0d |  | Аналитик [50%] | 8h | 720 |
| 13 | 1.2.7 | Выбор СУБД | 2h | 2018-04-18 09:45 | 2018-04-18 11:45 |  | 32.18d |  |  | Аналитик [50%] | 1h | 90 |
| 14 | 1.2.8 | Определение требований к аппаратному обеспечению | 0.14d | 2018-04-17 12:20 | 2018-04-17 14:25 | 12 | 32.97d |  |  | Аналитик [50%] | 0.54h | 48.75 |
| 15 | 1.3 | **Реализация** | 33.02d | 2018-04-11 12:10 | 2018-05-28 12:20 |  | 0d |  |  |  | 120.08h | 12,008.33 |
| 16 | 1.3.1 | Создание базы данных | 1.08d | 2018-04-11 12:10 | 2018-04-12 12:50 | 7 | 0d |  |  | Программист [50%] | 4.33h | 433.33 |
| 17 | 1.3.2 | **Создание сервера** | 31.94d | 2018-04-12 12:50 | 2018-05-28 12:20 |  | 0d |  |  |  | 34.75h | 3,475 |
| 18 | 1.3.2.1 | Создание основы | 0.14d | 2018-04-12 12:50 | 2018-04-12 14:55 | 16 | 0d |  |  | Программист [50%] | 0.54h | 54.17 |
| 19 | 1.3.2.2 | Подключение модулей и библиотек | 0.39d | 2018-04-12 14:55 | 2018-04-12 18:00 | 18 | 0d |  |  | Программист [50%] | 1.54h | 154.17 |
| 20 | 1.3.2.3 | Создание собственных модулей | 5.17d | 2018-05-11 11:00 | 2018-05-23 12:20 | 19 | 3d |  |  | Программист [50%] | 20.67h | 2,066.67 |
| 21 | 1.3.2.4 | Создание маршрутизации | 3d | 2018-05-23 12:20 | 2018-05-28 12:20 | 19 | 0d |  |  | Программист [50%] | 12h | 1,200 |
| 22 | 1.3.3 | **Создание веб-страниц** | 13.33d | 2018-04-13 09:00 | 2018-05-02 11:40 |  | 8.06d | 0d |  |  | 53.33h | 5,333.33 |
| 23 | 1.3.3.1 | Создание шаблонов страниц | 4.17d | 2018-04-23 09:00 | 2018-04-27 10:20 | 19 | 11.23d |  |  | Программист [50%] | 16.67h | 1,666.67 |
| 24 | 1.3.3.2 | Создание стилей | 3.17d | 2018-04-27 10:20 | 2018-05-02 11:40 | 19 | 8.06d |  |  | Программист [50%] | 12.67h | 1,266.67 |
| 25 | 1.3.3.3 | Создание скриптов | 6d | 2018-04-13 09:00 | 2018-04-20 18:00 | 19 | 15.4d |  |  | Программист [50%] | 24h | 2,400 |

| ID | WBS | Task | Duration | Start | Finish | Predecessors | Total slack | Free slack | Resources | Work | Cost |
| --- | --- | --- | --- | --- | --- | --- | --- | --- | --- | --- | --- |
| 26 | 1.3.4 | **Создание мобильных приложений** | 6.92d | 2018-05-02 11:40 | 2018-05-11 11:00 |  | 8.06d | 0d |  | 27.67h | 2,766.67 |
| 27 | 1.3.4.1 | Мобильное приложение для клиента | 2.92d | 2018-05-02 11:40 | 2018-05-07 11:00 | 22 | 8.06d | 0d | Программист [50%] | 11.67h | 1,166.67 |
| 28 | 1.3.4.2 | Мобильное приложение для водителя | 4d | 2018-05-07 11:00 | 2018-05-11 11:00 | 27 | 8.06d |  | Программист [50%] | 16h | 1,600 |
| 29 | 1.4 | **Тестирование** | 19.08d | 2018-05-02 11:40 | 2018-05-29 12:20 |  | 0d |  |  | 24h | 2,160 |
| 30 | 1.4.1 | Одновременное подключение | 1d | 2018-05-28 12:20 | 2018-05-29 12:20 | 17 | 0d |  | Тестировщик [25%] | 2h | 160 |
| 31 | 1.4.2 | Авторизация | 0.27d | 2018-05-02 17:00 | 2018-05-03 10:10 | 22 | 18.27d |  | Тестировщик [25%] | 0.54h | 43.33 |
| 32 | 1.4.3 | **Регистрация** | 0.54d | 2018-05-02 11:40 | 2018-05-02 17:00 |  | 18.54d |  |  | 1.08h | 86.67 |
| 33 | 1.4.3.1 | Создание пользователя | 0.27d | 2018-05-02 11:40 | 2018-05-02 14:50 | 22 | 18.54d | 0d | Тестировщик [25%] | 0.54h | 43.33 |
| 34 | 1.4.3.2 | Подтверждение регистрации | 0.27d | 2018-05-02 14:50 | 2018-05-02 17:00 | 33 | 18.54d |  | Тестировщик [25%] | 0.54h | 43.33 |
| 35 | 1.4.4 | Оформление заказа | 2d | 2018-05-02 17:00 | 2018-05-07 09:10 | 22 | 16.4d |  | Тестировщик [25%] | 4h | 320 |
| 36 | 1.4.5 | Диспетчерская панель | 1.08d | 2018-05-02 17:00 | 2018-05-07 17:50 | 22 | 15.44d |  | Тестировщик [25%] | 2.17h | 173.33 |
| 37 | 1.4.6 | Мобильные приложения | 1.1d | 2018-05-11 11:00 | 2018-05-14 11:50 | 26 | 8.06d | 0d | Тестировщик [25%] | 2.21h | 176.67 |
| 38 | 1.4.7 | Исправление ошибок | 3d | 2018-05-14 11:50 | 2018-05-17 11:50 | 37 | 8.06d |  | Программист [50%] | 12h | 1,200 |
| 39 | 1.5 | **Внедрение** | 3.1d | 2018-05-29 12:20 | 2018-06-01 14:10 |  | 0d |  |  | 12.42h | 1,161.67 |
| 40 | 1.5.1 | Развертывание БД | 0.25d | 2018-05-29 12:20 | 2018-05-29 15:20 | 29 | 0d |  | Программист [50%] | 1h | 100 |
| 41 | 1.5.2 | Развертывание сервера | 0.43d | 2018-05-29 15:20 | 2018-05-30 09:45 | 40 | 0d |  | Программист [50%] | 1.71h | 170.83 |
| 42 | 1.5.3 | Получение и привязка домена к серверу | 0.43d | 2018-05-30 09:45 | 2018-05-30 14:10 | 41 | 0d |  | Программист [50%] | 1.71h | 170.83 |
| 43 | 1.5.4 | Руководство администратора | 2d | 2018-05-30 14:10 | 2018-06-01 14:10 | 42 | 0d |  | Аналитик [50%] | 8h | 720 |
